# 防火墙替换项目整体周期

Schedule from a web Gantt chart, 2025-08-15 to 2025-10-29.
Every day is a working day

## Schedule

| ID | WBS | Task | Duration | Start | Finish | Predecessors | Status |
| --- | --- | --- | --- | --- | --- | --- | --- |
| 2 | 1 | **调研阶段** | 4d | 2025-08-18 | 2025-08-21 |  |  |
| 3 | 1.1 | 调研工作启动会 | 1d | 2025-08-18 | 2025-08-18 |  |  |
| 4 | 1.2 | IDC网络环境调研 | 1d | 2025-08-18 | 2025-08-18 |  |  |
| 5 | 1.3 | 工厂网络环境调研 | 1d | 2025-08-19 | 2025-08-19 | 4 | waiting |
| 6 | 1.4 | 调研资料整理 | 1d | 2025-08-20 | 2025-08-20 | 5 | waiting |
| 7 | 1.5 | 调研工作确认会 | 1d | 2025-08-21 | 2025-08-21 | 6 | waiting |
| 8 | 2 | **方案设计阶段** | 13d | 2025-08-22 | 2025-09-03 |  |  |
| 9 | 2.1 | 方案设计工作启动会 | 1d | 2025-08-22 | 2025-08-22 |  |  |
| 10 | 2.2 | IDC防火墙网络优化设计 | 3d | 2025-08-22 | 2025-08-24 |  |  |
| 11 | 2.3 | 安全策略标准制定 | 3d | 2025-08-25 | 2025-08-27 | 10 | waiting |
| 12 | 2.4 | IDC安全策略优化设计 | 3d | 2025-08-28 | 2025-08-30 | 11 | waiting |
| 13 | 2.5 | 工厂/办公室防火墙安全策略优化设计 | 3d | 2025-08-31 | 2025-09-02 | 12 | waiting |
| 14 | 2.6 | 方案设计工作确认会 | 1d | 2025-09-03 | 2025-09-03 | 13 | waiting |
| 15 | 3 | **项目设计阶段** | 21d | 2025-09-04 | 2025-09-24 |  |  |
| 16 | 3.1 | 项目设计启动会 | 1d | 2025-09-04 | 2025-09-04 | 14 | waiting |
| 17 | 3.2 | SDC上海防火墙clish脚本配置设计与测试 | 2d | 2025-09-05 | 2025-09-06 | 16 | waiting |
| 18 | 3.3 | CHC上海来福士中心防火墙脚本配置设计与测试 | 2d | 2025-09-07 | 2025-09-08 | 17 | waiting |
| 19 | 3.4 | ABAC上海前滩办公室防火墙脚本配置设计与测试 | 2d | 2025-09-09 | 2025-09-10 | 18 | waiting |
| 20 | 3.5 | ABAC江苏贸易公司（新如东）防火墙脚本配置设计与测试 | 1d | 2025-09-11 | 2025-09-11 | 19 | waiting |
| 21 | 3.6 | ABAC如东工厂防火墙脚本配置设计与测试 | 1d | 2025-09-12 | 2025-09-12 | 20 | waiting |
| 22 | 3.7 | ABSC哈尔滨办公室防火墙脚本配置设计与测试 | 1d | 2025-09-23 | 2025-09-23 | 32 | waiting |
| 23 | 3.8 | ABMC烟台工厂防火墙脚本配置设计与测试 | 1d | 2025-09-16 | 2025-09-16 | 27 | waiting |
| 24 | 3.9 | ABAC江西工厂防火墙脚本配置设计与测试 | 1d | 2025-09-20 | 2025-09-20 | 30 | waiting |
| 25 | 3.10 | ABAC陕西工厂防火墙脚本配置设计与测试 | 1d | 2025-09-13 | 2025-09-13 | 21 | waiting |
| 26 | 3.11 | ABAC新乡工厂防火墙脚本配置设计与测试 | 1d | 2025-09-14 | 2025-09-14 | 25 | waiting |
| 27 | 3.12 | ABAC天津工厂防火墙脚本配置设计与测试 | 1d | 2025-09-15 | 2025-09-15 | 26 | waiting |
| 28 | 3.13 | ABAC安徽工厂防火墙脚本配置设计与测试 | 1d | 2025-09-17 | 2025-09-17 | 23 | waiting |
| 29 | 3.14 | ABAC驻马店工厂防火墙脚本配置设计与测试 | 1d | 2025-09-18 | 2025-09-18 | 28 | waiting |
| 30 | 3.15 | ABAC鞍山工厂防火墙脚本配置设计与测试 | 1d | 2025-09-19 | 2025-09-19 | 29 | waiting |
| 31 | 3.16 | ABAC哈尔滨办公室防火墙脚本配置设计与测试 | 1d | 2025-09-21 | 2025-09-21 | 24 | waiting |
| 32 | 3.17 | ABAC哈尔滨工厂防火墙脚本配置设计与测试 | 1d | 2025-09-22 | 2025-09-22 | 31 | waiting |
| 33 | 3.18 | 项目设计工作确认会 | 1d | 2025-09-24 | 2025-09-24 | 22 | waiting |

| ID | WBS | Task | Duration | Start | Finish | Predecessors | Status |
| --- | --- | --- | --- | --- | --- | --- | --- |
| 34 | 4 | **项目交付阶段** | 73d | 2025-08-15 | 2025-10-26 |  |  |
| 35 | 4.1 | 项目交付阶段启动会 | 1d | 2025-09-11 | 2025-09-11 | 19 | waiting |
| 36 | 4.2 | SMS服务器安装调试（远程） | 1d | 2025-08-15 | 2025-08-15 |  |  |
| 37 | 4.3 | **SDC上海防火墙设备上架入网调试（现场）** | 5d | 2025-09-11 | 2025-09-15 |  |  |
| 38 | 4.3.1 | 差旅 | 1d | 2025-09-11 | 2025-09-11 | 19 | waiting |
| 39 | 4.3.2 | 设备配置+割接 | 3d | 2025-09-12 | 2025-09-14 | 38 | waiting |
| 40 | 4.3.3 | 网络保障 | 1d | 2025-09-15 | 2025-09-15 | 39 | waiting |
| 41 | 4.4 | **CHC上海来福士中心防火墙替换（现场）** | 2d | 2025-09-16 | 2025-09-17 |  |  |
| 42 | 4.4.1 | 设备配置+割接 | 1d | 2025-09-16 | 2025-09-16 | 40 | waiting |
| 43 | 4.4.2 | 网络保障 | 1d | 2025-09-17 | 2025-09-17 | 42 | waiting |
| 44 | 4.5 | **ABAC上海前滩办公室防火墙替换（现场）** | 3d | 2025-09-18 | 2025-09-20 |  |  |
| 45 | 4.5.1 | 设备配置+割接 | 1d | 2025-09-18 | 2025-09-18 | 43 | waiting |
| 46 | 4.5.2 | 网络保障 | 1d | 2025-09-19 | 2025-09-19 | 45 | waiting |
| 47 | 4.5.3 | 差旅 | 1d | 2025-09-20 | 2025-09-20 | 46 | waiting |
| 48 | 4.6 | **ABAC江苏贸易公司（新如东）防火墙替换（远程）** | 2d | 2025-09-21 | 2025-09-22 |  |  |
| 49 | 4.6.1 | 设备配置+割接 | 1d | 2025-09-21 | 2025-09-21 | 47 | waiting |
| 50 | 4.6.2 | 网络保障 | 1d | 2025-09-22 | 2025-09-22 | 49 | waiting |
| 51 | 4.7 | **ABAC如东工厂防火墙替换（远程）** | 2d | 2025-09-23 | 2025-09-24 |  |  |
| 52 | 4.7.1 | 设备配置+割接 | 1d | 2025-09-23 | 2025-09-23 | 50 | waiting |
| 53 | 4.7.2 | 网络保障 | 1d | 2025-09-24 | 2025-09-24 | 52 | waiting |
| 54 | 4.8 | **ABSC哈尔滨办公室防火墙替换（远程）** | 2d | 2025-09-25 | 2025-09-26 |  |  |
| 55 | 4.8.1 | 设备配置+割接 | 1d | 2025-09-25 | 2025-09-25 | 53 | waiting |
| 56 | 4.8.2 | 网络保障 | 1d | 2025-09-26 | 2025-09-26 | 55 | waiting |
| 57 | 4.9 | **ABMC烟台工厂防火墙替换（远程）** | 2d | 2025-09-27 | 2025-09-28 |  |  |
| 58 | 4.9.1 | 设备配置+割接 | 1d | 2025-09-27 | 2025-09-27 | 56 | waiting |
| 59 | 4.9.2 | 网络保障 | 1d | 2025-09-28 | 2025-09-28 | 58 | waiting |

| ID | WBS | Task | Duration | Start | Finish | Predecessors | Status |
| --- | --- | --- | --- | --- | --- | --- | --- |
| 60 | 4.10 | **ABAC江西工厂防火墙替换（现场）** | 3d | 2025-09-29 | 2025-10-01 |  |  |
| 61 | 4.10.1 | 差旅 | 1d | 2025-09-29 | 2025-09-29 | 59 | waiting |
| 62 | 4.10.2 | 设备配置+割接 | 1d | 2025-09-30 | 2025-09-30 | 61 | waiting |
| 63 | 4.10.3 | 网络保障 | 1d | 2025-10-01 | 2025-10-01 | 62 | waiting |
| 64 | 4.11 | **ABAC安徽工厂防火墙替换（现场）** | 3d | 2025-10-02 | 2025-10-04 |  |  |
| 65 | 4.11.1 | 差旅 | 1d | 2025-10-02 | 2025-10-02 | 63 | waiting |
| 66 | 4.11.2 | 设备配置+割接 | 1d | 2025-10-03 | 2025-10-03 | 65 | waiting |
| 67 | 4.11.3 | 网络保障 | 1d | 2025-10-04 | 2025-10-04 | 66 | waiting |
| 68 | 4.12 | **ABAC驻马店工厂防火墙替换（现场）** | 3d | 2025-10-05 | 2025-10-07 |  |  |
| 69 | 4.12.1 | 差旅 | 1d | 2025-10-05 | 2025-10-05 | 67 | waiting |
| 70 | 4.12.2 | 设备配置+割接 | 1d | 2025-10-06 | 2025-10-06 | 69 | waiting |
| 71 | 4.12.3 | 网络保障 | 1d | 2025-10-07 | 2025-10-07 | 70 | waiting |
| 72 | 4.13 | **ABAC新乡工厂防火墙替换（现场）** | 3d | 2025-10-08 | 2025-10-10 |  |  |
| 73 | 4.13.1 | 差旅 | 1d | 2025-10-08 | 2025-10-08 | 71 | waiting |
| 74 | 4.13.2 | 设备配置+割接 | 1d | 2025-10-09 | 2025-10-09 | 73 | waiting |
| 75 | 4.13.3 | 网络保障 | 1d | 2025-10-10 | 2025-10-10 | 74 | waiting |
| 76 | 4.14 | **ABAC陕西工厂防火墙替换（现场）** | 3d | 2025-10-11 | 2025-10-13 |  |  |
| 77 | 4.14.1 | 差旅 | 1d | 2025-10-11 | 2025-10-11 | 75 | waiting |
| 78 | 4.14.2 | 设备配置+割接 | 1d | 2025-10-12 | 2025-10-12 | 77 | waiting |
| 79 | 4.14.3 | 网络保障 | 1d | 2025-10-13 | 2025-10-13 | 78 | waiting |
| 80 | 4.15 | **ABAC天津工厂防火墙替换（现场）** | 3d | 2025-10-14 | 2025-10-16 |  |  |
| 81 | 4.15.1 | 差旅 | 1d | 2025-10-14 | 2025-10-14 | 79 | waiting |
| 82 | 4.15.2 | 设备配置+割接 | 1d | 2025-10-15 | 2025-10-15 | 81 | waiting |
| 83 | 4.15.3 | 网络保障 | 1d | 2025-10-16 | 2025-10-16 | 82 | waiting |

| ID | WBS | Task | Duration | Start | Finish | Predecessors | Status |
| --- | --- | --- | --- | --- | --- | --- | --- |
| 84 | 4.16 | **ABAC鞍山工厂防火墙替换（现场）** | 3d | 2025-10-17 | 2025-10-19 |  |  |
| 85 | 4.16.1 | 差旅 | 1d | 2025-10-17 | 2025-10-17 | 83 | waiting |
| 86 | 4.16.2 | 设备配置+割接 | 1d | 2025-10-18 | 2025-10-18 | 85 | waiting |
| 87 | 4.16.3 | 网络保障 | 1d | 2025-10-19 | 2025-10-19 | 86 | waiting |
| 88 | 4.17 | **ABAC哈尔滨办公室防火墙替换（现场）** | 3d | 2025-10-20 | 2025-10-22 |  |  |
| 89 | 4.17.1 | 差旅 | 1d | 2025-10-20 | 2025-10-20 | 87 | waiting |
| 90 | 4.17.2 | 设备配置+割接 | 1d | 2025-10-21 | 2025-10-21 | 89 | waiting |
| 91 | 4.17.3 | 网络保障 | 1d | 2025-10-22 | 2025-10-22 | 90 | waiting |
| 92 | 4.18 | **ABAC哈尔滨工厂防火墙替换（现场）** | 3d | 2025-10-23 | 2025-10-25 |  |  |
| 93 | 4.18.1 | 差旅 | 1d | 2025-10-23 | 2025-10-23 | 91 | waiting |
| 94 | 4.18.2 | 设备配置+割接 | 1d | 2025-10-24 | 2025-10-24 | 93 | waiting |
| 95 | 4.18.3 | 网络保障 | 1d | 2025-10-25 | 2025-10-25 | 94 | waiting |
| 96 | 4.19 | 项目交付阶段总结会 | 1d | 2025-10-26 | 2025-10-26 | 95 | waiting |
| 97 | 5 | **项目验收阶段** | 3d | 2025-10-27 | 2025-10-29 |  |  |
| 98 | 5.1 | 项目验收工作启动会 | 1d | 2025-10-27 | 2025-10-27 | 96 | waiting |
| 99 | 5.2 | 项目验收文档整理 | 1d | 2025-10-28 | 2025-10-28 | 98 | waiting |
| 100 | 5.3 | 项目验收 | 1d | 2025-10-29 | 2025-10-29 | 99 | waiting |
